# IT系统功能恢复进度

Schedule from a web Gantt chart, 2024-11-15 to 2025-06-26.
Saturdays and Sundays are off

## Schedule

| ID | WBS | Task | Type | Duration | Start | Finish | Predecessors | Complete | Status |
| --- | --- | --- | --- | --- | --- | --- | --- | --- | --- |
| 2 | 1 | 策划准备 | fixed start | 1d | 2024-11-20 | 2024-11-20 |  |  |  |
| 3 | 2 | **骨干网恢复** |  | 80d | 2024-11-15 | 2025-03-06 |  |  |  |
| 4 | 2.1 | 核心交换板卡级清理维护 |  | 15d | 2024-11-15 | 2024-12-05 |  | 1% |  |
| 5 | 2.2 | 35台链路层交换机清理维护 |  | 15d | 2024-12-06 | 2024-12-26 | 4 |  | waiting |
| 6 | 2.3 | 15台区域接入层交换机安装调试 |  | 15d | 2024-12-27 | 2025-01-16 | 5 |  | waiting |
| 7 | 2.4 | 港口无线链路设备安装调试 |  | 20d | 2025-01-17 | 2025-02-13 | 6 |  | waiting |
| 8 | 2.5 | 骨干网调试及优化 |  | 15d | 2025-02-14 | 2025-03-06 | 7 |  | waiting |
| 9 | 3 | **信息系统及服务恢复** |  | 40d | 2025-03-07 | 2025-05-01 |  |  |  |
| 10 | 3.1 | 电子邮件系统更新 |  | 40d | 2025-03-07 | 2025-05-01 | 8 |  | waiting |
| 11 | 3.2 | DC-APP服务器授权更新 |  | 20d | 2025-03-07 | 2025-04-03 | 8 |  | waiting |
| 12 | 3.3 | ISP带宽升级 |  | 20d | 2025-03-07 | 2025-04-03 | 8 |  | waiting |
| 13 | 3.4 | 域终端病毒防护系统部署测试 |  | 20d | 2025-03-07 | 2025-04-03 | 8 |  | waiting |
| 14 | 4 | **PC终端设备恢复** |  | 160d | 2024-11-15 | 2025-06-26 |  |  |  |
| 15 | 4.1 | 授权更新准备 |  | 20d | 2025-04-04 | 2025-05-01 | 13 |  | waiting |
| 16 | 4.2 | Microsoft-E5授权购买 |  | 10d | 2024-11-15 | 2024-11-28 |  |  |  |
| 17 | 4.3 | 终端零件采购 |  | 20d | 2025-04-04 | 2025-05-01 | 13 |  | waiting |
| 18 | 4.4 | 终端硬件维护 |  | 20d | 2025-05-02 | 2025-05-29 | 17 |  | waiting |
| 19 | 4.5 | 终端硬件升级及测试 |  | 10d | 2025-05-30 | 2025-06-12 | 18 |  | waiting |
| 20 | 4.6 | Windows11系统更新 |  | 20d | 2025-05-30 | 2025-06-26 | 18 |  | waiting |
| 21 | 5 | **打印设备恢复** |  | 8d | 2024-11-15 | 2024-11-26 |  |  |  |
| 22 | 5.1 | 打印机故障修复 |  | 4d | 2024-11-15 | 2024-11-20 |  |  |  |
| 23 | 5.2 | 打印机清洁保养维护 |  | 4d | 2024-11-21 | 2024-11-26 | 22 |  | waiting |
| 24 | 5.3 | 打印机耗材订购 |  | 4d | 2024-11-15 | 2024-11-20 |  |  |  |
| 25 | 6 | **程控电话系统恢复** |  | 15d | 2024-11-15 | 2024-12-05 |  |  |  |
| 26 | 6.1 | IpOffice500语音网关清洁维护 |  | 10d | 2024-11-15 | 2024-11-28 |  |  |  |
| 27 | 6.2 | IpOffice500语音网关R12固件更新 |  | 15d | 2024-11-15 | 2024-12-05 |  |  |  |
| 28 | 6.3 | 配套HP服务器更新 |  | 15d | 2024-11-15 | 2024-12-05 |  |  |  |

| ID | WBS | Task | Duration | Start | Finish | Predecessors | Status |
| --- | --- | --- | --- | --- | --- | --- | --- |
| 29 | 7 | **生活营地无线网络覆盖升级** | 50d | 2025-03-07 | 2025-05-15 |  |  |
| 30 | 7.1 | 升级零件采购 | 20d | 2025-03-07 | 2025-04-03 | 8 | waiting |
| 31 | 7.2 | 线缆敷设及设备安装 | 15d | 2025-04-04 | 2025-04-24 | 30 | waiting |
| 32 | 7.3 | 配置及调试 | 15d | 2025-04-25 | 2025-05-15 | 31 | waiting |
